# Fabricação e Fornecimento do Tanque de Armazenamento TQ-960-30/1 (API 650) – Obra 2026-000037

Schedule from MS Project XML, 2026-08-17 to 2026-11-30.

## Schedule

| ID | WBS | Task | Duration | Start | Finish | Predecessors | Estimativa Otimista | Estimativa Provavel | Estimativa Pessimista | Indice Criticidade (%) | Pacote WBS / EAP |
| --- | --- | --- | --- | --- | --- | --- | --- | --- | --- | --- | --- |
| 1 | 0 | Fabricação e Fornecimento do Tanque de Armazenamento TQ-960-30/1 (API 650) – Obra 2026-000037 | 105d | 2026-08-17 | 2026-11-30 |  |  |  |  |  |  |
| 2 | 1.0 | **1.0 ATIVIDADES (Peso: 2%)** | 3d | 2026-08-17 | 2026-08-20 |  |  |  |  |  |  |
| 3 | 1.1 | Kick-off Meeting & Alinhamento de Requisitos (Oxiteno S.A. / Grupo Indorama) | 1d | 2026-08-17 | 2026-08-18 |  | 1 d | 1 d | 2 d | 100.0% | 1.0 - ATIVIDADES |
| 4 | 1.2 | Formalização do Termo de Abertura do Projeto (TAP) & Governança | 1d | 2026-08-19 | 2026-08-20 | 3 | 1 d | 1 d | 2 d | 100.0% | 1.0 - ATIVIDADES |
| 5 | 2.0 | **2.0 METODOS E PROCESSOS (Peso: 20%)** | 26d | 2026-08-21 | 2026-09-16 |  |  |  |  |  |  |
| 6 | 2.1 | Projeto Executivo & Detalhamento Mecânico 2D/3D (TQ-0960-30) | 4d | 2026-08-21 | 2026-08-27 | 4 | 3 d | 4 d | 6 d | 100.0% | 2.0 - METODOS E PROCESSOS |
| 7 | 2.2 | Memórias de Cálculo Estrutural e Pressão (API 650 / ASME) | 4d | 2026-08-28 | 2026-09-03 | 6 | 3 d | 4 d | 6 d | 0.1% | 2.0 - METODOS E PROCESSOS |
| 8 | 2.3 | Elaboração do PIT (Plano de Inspeção e Testes) e EPS/RQPS | 3d | 2026-09-04 | 2026-09-09 | 7 | 2 d | 3 d | 5 d | 0.1% | 2.0 - METODOS E PROCESSOS |
| 9 | 2.4 | Submissão, Análise e Aprovação Técnica pelo Cliente | 4d | 2026-09-10 | 2026-09-16 | 8 | 3 d | 4 d | 6 d | 0.1% | 2.0 - METODOS E PROCESSOS |
| 10 | 3.0 | **3.0 SUPRIMENTOS (Peso: 30%)** | 27d | 2026-08-28 | 2026-09-24 |  |  |  |  |  |  |
| 11 | 3.1 | Requisição de Compras & Cotação de Matérias-Primas Inox | 3d | 2026-08-28 | 2026-09-02 | 6 | 2 d | 3 d | 5 d | 99.9% | 3.0 - SUPRIMENTOS |
| 12 | 3.2 | Aquisição de Chapas Inox SA-240 304, Tubos e Flanges | 9d | 2026-09-03 | 2026-09-16 | 11 | 6 d | 9 d | 14 d | 99.9% | 3.0 - SUPRIMENTOS |
| 13 | 3.3 | Aquisição de Acessórios Aço Carbono, Juntas PTFE e Estojos | 4d | 2026-09-03 | 2026-09-09 | 11 | 3 d | 4 d | 6 d | 0.0% | 3.0 - SUPRIMENTOS |
| 14 | 3.4 | Recebimento, Inspeção Dimensional e Rastreabilidade de MP | 5d | 2026-09-17 | 2026-09-24 | 12, 13 | 3 d | 5 d | 8 d | 99.9% | 3.0 - SUPRIMENTOS |
| 15 | 4.0 | **4.0 FABRICAÇÃO E MONTAGEM (Peso: 40%)** | 48d | 2026-09-25 | 2026-11-12 |  |  |  |  |  |  |
| 16 | 4.1 | Traçado, Corte a Plasma e Chanfro das Chapas do Costado e Fundo | 4d | 2026-09-25 | 2026-10-01 | 9, 14 | 3 d | 4 d | 6 d | 100.0% | 4.0 - FABRICAÇÃO E MONTAGEM |
| 17 | 4.2 | Calandragem das Virolas e Pré-Montagem dos Aneis do Costado | 4d | 2026-10-02 | 2026-10-08 | 16 | 3 d | 4 d | 6 d | 100.0% | 4.0 - FABRICAÇÃO E MONTAGEM |
| 18 | 4.3 | Soldagem das Juntas Longitudinais e Circunferencias (ASME IX) | 6d | 2026-10-09 | 2026-10-19 | 17 | 4 d | 6 d | 9 d | 100.0% | 4.0 - FABRICAÇÃO E MONTAGEM |
| 19 | 4.4 | Montagem e Soldagem do Fundo Plano e Teto Cônico Autoportante | 4d | 2026-10-20 | 2026-10-26 | 18 | 3 d | 4 d | 6 d | 100.0% | 4.0 - FABRICAÇÃO E MONTAGEM |
| 20 | 4.5 | Fabricação/Instalação de Bocais A1-W1, Boca de Visita M1 e Guarda-Corpo | 4d | 2026-10-27 | 2026-11-02 | 19 | 3 d | 4 d | 6 d | 100.0% | 4.0 - FABRICAÇÃO E MONTAGEM |
| 21 | 4.6 | Execução de Ensaios END (Radiografia RX, LP, Caixa de Vácuo e PMI) | 3d | 2026-11-03 | 2026-11-06 | 20 | 2 d | 3 d | 5 d | 100.0% | 4.0 - FABRICAÇÃO E MONTAGEM |
| 22 | 4.7 | Preparação e Execução do Teste Hidrostático (TH) Fabril | 3d | 2026-11-09 | 2026-11-12 | 21 | 2 d | 3 d | 5 d | 100.0% | 4.0 - FABRICAÇÃO E MONTAGEM |
| 23 | 5.0 | **5.0 PINTURA (Peso: 7%)** | 7d | 2026-11-13 | 2026-11-20 |  |  |  |  |  |  |
| 24 | 5.1 | Decapagem Química e Passivação Integral das Superfícies em Aço Inox | 2d | 2026-11-13 | 2026-11-17 | 22 | 1 d | 2 d | 3 d | 100.0% | 5.0 - PINTURA |
| 25 | 5.2 | Jateamento e Pintura Externa dos Acessórios em Aço Carbono (Munsell 5Y 8/12) | 2d | 2026-11-18 | 2026-11-20 | 24 | 1 d | 2 d | 3 d | 100.0% | 5.0 - PINTURA |

Notes:
- 1: CRONOGRAMA GERADO POR PIPELINE INTELIGENTE COM EAP PADRONIZADA. / Análise de Monte Carlo (20.000 simulações): / • Prazo P50: 63.6 dias úteis / P90: 67.5 dias úteis / • Probabilidade de cumprimento do prazo contratual: 99.4% / • Buffer de contingência sugerido: 3.9 dias úteis / • Custo Médio Estimado: R$ 419.0k (Contingência P80-P50: R$ 21.4k) / Text1/2/3 = Estimativas Otimista/Provável/Pessimista / Text4 = Índice de Criticidade (%) / Text5 = Pacote WBS.
- 3: Estimativas de 3 Pontos: Otimista = 1d / Provável = 1d / Pessimista = 2d. / Índice de Criticidade (Monte Carlo): 100.0% das 20.000 iterações no Caminho Crítico.
- 4: Estimativas de 3 Pontos: Otimista = 1d / Provável = 1d / Pessimista = 2d. / Índice de Criticidade (Monte Carlo): 100.0% das 20.000 iterações no Caminho Crítico.
- 6: Estimativas de 3 Pontos: Otimista = 3d / Provável = 4d / Pessimista = 6d. / Índice de Criticidade (Monte Carlo): 100.0% das 20.000 iterações no Caminho Crítico.
- 7: Estimativas de 3 Pontos: Otimista = 3d / Provável = 4d / Pessimista = 6d. / Índice de Criticidade (Monte Carlo): 0.1% das 20.000 iterações no Caminho Crítico.
- 8: Estimativas de 3 Pontos: Otimista = 2d / Provável = 3d / Pessimista = 5d. / Índice de Criticidade (Monte Carlo): 0.1% das 20.000 iterações no Caminho Crítico.
- 9: Estimativas de 3 Pontos: Otimista = 3d / Provável = 4d / Pessimista = 6d. / Índice de Criticidade (Monte Carlo): 0.1% das 20.000 iterações no Caminho Crítico.
- 11: Estimativas de 3 Pontos: Otimista = 2d / Provável = 3d / Pessimista = 5d. / Índice de Criticidade (Monte Carlo): 99.9% das 20.000 iterações no Caminho Crítico.
- 12: Estimativas de 3 Pontos: Otimista = 6d / Provável = 9d / Pessimista = 14d. / Índice de Criticidade (Monte Carlo): 99.9% das 20.000 iterações no Caminho Crítico.
- 13: Estimativas de 3 Pontos: Otimista = 3d / Provável = 4d / Pessimista = 6d. / Índice de Criticidade (Monte Carlo): 0.0% das 20.000 iterações no Caminho Crítico.
- 14: Estimativas de 3 Pontos: Otimista = 3d / Provável = 5d / Pessimista = 8d. / Índice de Criticidade (Monte Carlo): 99.9% das 20.000 iterações no Caminho Crítico.
- 16: Estimativas de 3 Pontos: Otimista = 3d / Provável = 4d / Pessimista = 6d. / Índice de Criticidade (Monte Carlo): 100.0% das 20.000 iterações no Caminho Crítico.
- 17: Estimativas de 3 Pontos: Otimista = 3d / Provável = 4d / Pessimista = 6d. / Índice de Criticidade (Monte Carlo): 100.0% das 20.000 iterações no Caminho Crítico.
- 18: Estimativas de 3 Pontos: Otimista = 4d / Provável = 6d / Pessimista = 9d. / Índice de Criticidade (Monte Carlo): 100.0% das 20.000 iterações no Caminho Crítico.
- 19: Estimativas de 3 Pontos: Otimista = 3d / Provável = 4d / Pessimista = 6d. / Índice de Criticidade (Monte Carlo): 100.0% das 20.000 iterações no Caminho Crítico.
- 20: Estimativas de 3 Pontos: Otimista = 3d / Provável = 4d / Pessimista = 6d. / Índice de Criticidade (Monte Carlo): 100.0% das 20.000 iterações no Caminho Crítico.
- 21: Estimativas de 3 Pontos: Otimista = 2d / Provável = 3d / Pessimista = 5d. / Índice de Criticidade (Monte Carlo): 100.0% das 20.000 iterações no Caminho Crítico.
- 22: Estimativas de 3 Pontos: Otimista = 2d / Provável = 3d / Pessimista = 5d. / Índice de Criticidade (Monte Carlo): 100.0% das 20.000 iterações no Caminho Crítico.
- 24: Estimativas de 3 Pontos: Otimista = 1d / Provável = 2d / Pessimista = 3d. / Índice de Criticidade (Monte Carlo): 100.0% das 20.000 iterações no Caminho Crítico.
- 25: Estimativas de 3 Pontos: Otimista = 1d / Provável = 2d / Pessimista = 3d. / Índice de Criticidade (Monte Carlo): 100.0% das 20.000 iterações no Caminho Crítico.

| ID | WBS | Task | Duration | Start | Finish | Predecessors | Estimativa Otimista | Estimativa Provavel | Estimativa Pessimista | Indice Criticidade (%) | Pacote WBS / EAP |
| --- | --- | --- | --- | --- | --- | --- | --- | --- | --- | --- | --- |
| 26 | 6.0 | **6.0 EXPEDIÇÃO (Peso: 1%)** | 7d | 2026-11-23 | 2026-11-30 |  |  |  |  |  |  |
| 27 | 6.1 | Emissão, Compilação e Aprovação do Data Book Final com ART (SOP-BRA-019-01) | 1d | 2026-11-23 | 2026-11-24 | 22, 25 | 1 d | 1 d | 2 d | 100.0% | 6.0 - EXPEDIÇÃO |
| 28 | 6.2 | Embalagem Especial, Fabricação do Berço e Carregamento | 1d | 2026-11-25 | 2026-11-26 | 27 | 1 d | 1 d | 2 d | 100.0% | 6.0 - EXPEDIÇÃO |
| 29 | 6.3 | Transporte Rodoviário Especial CIF e Entrega Técnica no Polo Camaçari/BA | 1d | 2026-11-27 | 2026-11-30 | 28 | 1 d | 1 d | 2 d | 100.0% | 6.0 - EXPEDIÇÃO |

Notes:
- 27: Estimativas de 3 Pontos: Otimista = 1d / Provável = 1d / Pessimista = 2d. / Índice de Criticidade (Monte Carlo): 100.0% das 20.000 iterações no Caminho Crítico.
- 28: Estimativas de 3 Pontos: Otimista = 1d / Provável = 1d / Pessimista = 2d. / Índice de Criticidade (Monte Carlo): 100.0% das 20.000 iterações no Caminho Crítico.
- 29: Estimativas de 3 Pontos: Otimista = 1d / Provável = 1d / Pessimista = 2d. / Índice de Criticidade (Monte Carlo): 100.0% das 20.000 iterações no Caminho Crítico.
